# Customer Service Ramp Up

Schedule from MS Project, 2026-07-08 to 2026-12-12, status date 2026-10-12, costs in $, A marks actual dates.

## Calendars

- Standard: Mon-Fri 08:00-12:00, 13:00-17:00; Sat-Sun off.
- 24 Hours: Mon-Sun 00:00-24:00.
- Standard+Sat.: Mon-Sat 07:00-12:00, 12:30-19:00, 19:30-23:30; Sun off.

## Resources

| Resource | Group | Unit | Rate | Cost per use |
| --- | --- | --- | --- | --- |
| Customer Service Team | Service |  | 50 |  |
| Customer Service Lead | Service |  | 200 |  |
| Technology Lead | Technology |  | 52.5 |  |
| Content Developer | Design |  | 100 |  |
| Trainer | Training |  | 20 |  |
| Logistics | Logistics |  | 30 |  |
| Logistics Apprentice | Logistics |  | 10 |  |
| Trainer Apprentice | Training |  |  |  |
| Technology Apprentice | Technology |  | 20 |  |
| AI Token Time | Material | Bucket |  | 5000 |
| Cleaning | Maintenance |  |  |  |
| Service Budget | Service |  |  |  |
| Techonlogy Budget | Technology |  |  |  |
| Design Budget | Design |  |  |  |
| Training Budget | Training |  |  |  |
| Logistics Budget | Logistics |  |  |  |
| Material Budget | Material |  |  |  |
| Maintenance Budget | Maintenance |  |  |  |
| Project Budget | Hard_File_Project_Budget |  |  |  |

## Schedule

| ID | WBS | Task | Type | Duration | Start | Finish | Predecessors | Complete | Remaining | Baseline start | Baseline finish | Baseline duration | Total slack | Free slack | Constraint | Calendar | Resources | Work | Actual work | Cost | Baseline cost | Actual cost | Trace Log Field |
| --- | --- | --- | --- | --- | --- | --- | --- | --- | --- | --- | --- | --- | --- | --- | --- | --- | --- | --- | --- | --- | --- | --- | --- |
| 1 | 1 | Read the note for an explanation of the purpose of the template | milestone | 0d | 2026-07-08 A | 2026-07-08 A |  | 100% |  | 2026-07-08 | 2026-07-08 | 0d |  |  |  |  |  |  |  |  |  |  |  |
| 2 | 2 | **Initial Assessment** |  | 31d? | 2026-07-08 A | 2026-08-19 A |  | 100% |  | 2026-07-08 | 2026-07-31 | 18d? |  |  |  |  |  | 264h | 264h | 13,200 | 9,600 | 13,200 |  |
| 3 | 2.1 | **Perform Product Review** |  | 31d? | 2026-07-08 A | 2026-08-19 A |  | 100% |  | 2026-07-08 | 2026-07-31 | 18d? |  |  |  |  |  | 264h | 264h | 13,200 | 9,600 | 13,200 |  |
| 4 | 2.1.1 | Identify typical product usage scenarios |  | 1d? | 2026-07-08 A | 2026-07-08 A | 1 | 100% |  | 2026-07-08 | 2026-07-08 | 1d? |  |  |  |  | Customer Service Team | 8h | 8h | 400 | 400 | 400 |  |
| 5 | 2.1.2 | Identify typical customer types |  | 1d? | 2026-07-08 A | 2026-07-09 A | 4 | 100% |  | 2026-07-08 | 2026-07-09 | 1d? |  |  |  |  | Customer Service Team | 8h | 8h | 400 | 400 | 400 |  |
| 6 | 2.1.3 | Identify anticipated product problem points |  | 1.35mo | 2026-07-09 A | 2026-07-28 A | 5 | 100% |  | 2026-07-09 | 2026-07-23 | 1mo |  |  |  |  | Customer Service Team | 216h | 216h | 10,800 | 8,000 | 10,800 |  |
| 7 | 2.1.4 | Determine solutions for product points |  | 1d? | 2026-08-12 A | 2026-08-12 A | 6 | 100% |  | 2026-07-23 | 2026-07-23 | 1d? |  |  | start no earlier than 2026-08-12 | Standard+Sat. | Customer Service Team | 8h | 8h | 400 | 400 | 400 | Path 02 |
| 8 | 2.1.5 | Document product review results |  | 3d? | 2026-08-18 A | 2026-08-19 A | 7 | 100% |  | 2026-07-23 | 2026-07-24 | 1d? |  |  |  |  | Customer Service Team | 24h | 24h | 1,200 | 400 | 1,200 | Path 02 |
| 9 | 2.1.6 | Product Review COMPLETE | milestone | 0d | 2026-08-19 A | 2026-08-19 A | 8 | 100% |  | 2026-07-31 | 2026-07-31 | 0d |  |  | finish no earlier than 2026-07-31 |  |  |  |  |  |  |  | Path 02 |
| 10 | 3 | **Service Planning** |  | 50.64d? | 2026-08-05 A | 2026-10-14 |  | 77% | 11.62d? | 2026-07-31 | 2026-08-17 | 11d? | 42.36d |  |  |  |  | 184h | 144h | 9,120 | 8,000 | 7,200 |  |
| 11 | 3.1 | **Design Support Services** |  | 50.64d? | 2026-08-05 A | 2026-10-14 |  | 77% | 11.62d? | 2026-07-31 | 2026-08-14 | 10d? | 42.36d |  |  |  |  | 184h | 144h | 9,120 | 8,000 | 7,200 |  |
| 12 | 3.1.1 | **Design Customer Service Contact Scenarios** |  | 0d? | 2026-10-12 | 2026-10-13 |  |  |  | 2026-07-31 | 2026-08-04 | 1d? | 42.36d |  |  |  |  | 24h |  | 1,200 | 1,200 |  |  |
| 13 | 3.1.1.1 | Online support |  | 1d? | 2026-10-12 | 2026-10-13 | 9 |  |  | 2026-07-31 | 2026-08-03 | 1d? | 42.36d | 0d | start no earlier than 2026-10-12 |  | Customer Service Team | 8h |  | 400 | 400 |  | Path 03 |
| 14 | 3.1.1.2 | Phone support |  | 1d? | 2026-10-12 | 2026-10-13 | 9 |  |  | 2026-08-03 | 2026-08-03 | 1d? | 42.36d | 0d | start no earlier than 2026-10-12 |  | Customer Service Team | 8h |  | 400 | 400 |  | Path 03 |
| 15 | 3.1.1.3 | On-site support |  | 1d? | 2026-10-12 | 2026-10-13 | 9 |  |  | 2026-08-03 | 2026-08-04 | 1d? | 42.36d | 0d | start no earlier than 2026-10-12 |  | Customer Service Team | 8h |  | 400 | 400 |  | Path 03 |
| 16 | 3.1.1.4 | Design of customer service contact scenarios COMPLETE | milestone | 0d | 2026-10-13 | 2026-10-13 | 15, 13, 14 |  |  | 2026-08-04 | 2026-08-04 | 0d | 43d | 0d | start no earlier than 2026-10-12 |  |  |  |  |  |  |  | Path 03 |
| 17 | 3.1.2 | **Develop Levels of Customer Service (Free and Paid)** |  | 50.64d? | 2026-08-05 A | 2026-10-14 |  | 88% | 5.88d? | 2026-08-04 | 2026-08-14 | 9d? | 42.36d |  |  |  |  | 160h | 144h | 7,920 | 6,800 | 7,200 |  |
| 18 | 3.1.2.1 | Identify types of problems to be solved |  | 1d | 2026-10-13 | 2026-10-13 | 16 |  |  | 2026-08-04 | 2026-08-04 | 1d | 42.36d | 0d | start no earlier than 2026-10-12 |  | Customer Service Team | 8h |  | 400 | 400 |  | Path 03 |
| 19 | 3.1.2.2 | Identify service delivery options |  | 1.36d? | 2026-10-13 | 2026-10-14 | 18 |  |  | 2026-08-04 | 2026-08-05 | 1d? | 42.36d |  | start no earlier than 2026-10-12 |  | Customer Service Team [50%]; Content Developer [25%]; Trainer | 8h |  | 320 | 400 |  | Path 03 |
| 20 | 3.1.2.3 | Determine required skill sets for various support options |  | 3.6w | 2026-08-05 A | 2026-08-18 A |  | 100% |  | 2026-08-05 | 2026-08-14 | 3w |  |  |  |  | Customer Service Team | 144h | 144h | 7,200 | 6,000 | 7,200 | Path 02 |
| 21 | 3.1.2.4 | Customer Service Level Design COMPLETE | milestone | 0d | 2026-08-18 A | 2026-08-18 A | 20 | 100% |  | 2026-08-14 | 2026-08-14 | 0d |  |  |  |  |  |  |  |  |  |  | Path 02 |
| 22 | 3.1.3 | Design of Support Services COMPLETE | milestone | 0d | 2026-08-18 A | 2026-08-18 A | 21 | 100% |  | 2026-08-14 | 2026-08-14 | 0d |  |  |  |  |  |  |  |  |  |  | Path 02 |
| 23 | 3.2 | Service Planning & Design COMPLETE | milestone | 0d | 2026-08-19 A | 2026-08-19 A | 22 | 100% |  | 2026-08-17 | 2026-08-17 | 1d? |  |  |  |  |  |  |  |  |  |  | Path 02 |
| 24 | 4 | **Service Delivery Infrastructure Planning** |  | 55.4d? | 2026-08-19 A | 2026-11-04 |  | 60% | 22.4d? | 2026-07-31 | 2026-09-29 | 41.75d? | 27.6d |  |  |  |  | 411h | 259h | 76,219.42 | 58,780 | 41,703.08 |  |
| 25 | 4.1 | **Resources Requirements** |  | 1.5d | 2026-08-19 A | 2026-08-20 A |  | 100% |  | 2026-08-18 | 2026-08-20 | 2.5d? |  |  |  |  |  | 12h | 12h | 2,400 | 4,000 | 2,400 |  |
| 26 | 4.1.1 | Estimate demand for customer support (all options) |  | 0.5d | 2026-08-19 A | 2026-08-19 A | 23 | 100% |  | 2026-08-18 | 2026-08-18 | 1d? |  |  |  |  | Customer Service Lead | 4h | 4h | 800 | 1,600 | 800 | Path 02 |
| 27 | 4.1.2 | Estimate resource requirements |  | 4h | 2026-08-19 A | 2026-08-19 A | 26 | 100% |  | 2026-08-19 | 2026-08-19 | 4h |  |  |  |  | Customer Service Lead | 4h | 4h | 800 | 800 | 800 | Path 02 |
| 28 | 4.1.3 | Estimate effort to hire new resources |  | 0.5d | 2026-08-20 A | 2026-08-20 A | 27 | 100% |  | 2026-08-19 | 2026-08-20 | 1d? |  |  |  |  | Customer Service Lead | 4h | 4h | 800 | 1,600 | 800 | Path 02 |
| 29 | 4.1.4 | Resource Planning COMPLETE | milestone | 0d | 2026-08-20 A | 2026-08-20 A | 28 | 100% |  | 2026-08-20 | 2026-08-20 | 0d |  |  |  |  |  |  |  |  |  |  | Path 02 |

Notes:
- 1: The purpose of this template is to support a customer service organization in setting up for the support of a new product. This is a complex topic that could require several schedules to cover all of the components. For simplicity, some of the areas have been noted with only one task, and will need to be developed in greater detail in separate plans. Technology infrastructure is one example of this. We recommend that a separate schedule be created for the development of the technology to support the introduction of a new product. There are several examples of technology templates available for this purpose.

| ID | WBS | Task | Type | Duration | Start | Finish | Predecessors | Complete | Remaining | Baseline start | Baseline finish | Baseline duration | Total slack | Free slack | Constraint | Resources | Work | Actual work | Cost | Baseline cost | Actual cost | Trace Log Field |
| --- | --- | --- | --- | --- | --- | --- | --- | --- | --- | --- | --- | --- | --- | --- | --- | --- | --- | --- | --- | --- | --- | --- |
| 30 | 4.2 | **Training & Readiness** |  | 54.4d? | 2026-08-19 A | 2026-11-04 |  | 61% | 21.2d? | 2026-07-31 | 2026-09-29 | 41.75d? | -16.4d | 0d |  |  | 383h | 247h | 72,979.42 | 53,940 | 39,303.08 |  |
| 31 | 4.2.1 | **Training Needs Assessment** |  | 4.5d? | 2026-08-19 A | 2026-08-26 A |  | 100% |  | 2026-07-31 | 2026-08-21 | 14.5d? |  |  |  |  | 86h | 86h | 15,413.08 | 2,800 | 12,463.08 |  |
| 32 | 4.2.1.1 | Review output of product review phase |  | 0.5d | 2026-08-19 A | 2026-08-19 A | 9 | 100% |  | 2026-07-31 | 2026-08-01 | 1d? |  |  |  | Content Developer; Cleaning | 4h | 4h | 1,400 | 800 | 400 | Path 02 |
| 33 | 4.2.1.2 | Review anticipated skill sets of support resources |  | 4d | 2026-08-20 A | 2026-08-25 A | 29 | 100% |  | 2026-08-20 | 2026-08-20 | 1d? |  |  |  | Content Developer; Cleaning [1.6%]; Logistics Apprentice; AI Token Time [1.16 Bucket] | 74h | 74h | 12,813.08 | 800 | 10,863.08 | Path 02 |
| 34 | 4.2.1.3 | Determine product-specific training needs |  | 1d? | 2026-08-25 A | 2026-08-26 A | 33, 32 | 100% |  | 2026-08-20 | 2026-08-21 | 1d? |  |  |  | Content Developer; Customer Service Lead | 8h | 8h | 1,200 | 1,200 | 1,200 | Path 02 |
| 35 | 4.2.1.4 | Training Needs Assessment COMPLETE | milestone | 0d | 2026-08-26 A | 2026-08-26 A | 34 | 100% |  | 2026-08-21 | 2026-08-21 | 0d |  |  |  |  |  |  |  |  |  | Path 02 |
| 36 | 4.2.2 | **Training Planning** |  | 49.9d? | 2026-08-26 A | 2026-11-04 |  | 55% | 22.54d? | 2026-08-21 | 2026-09-29 | 27.25d? | -16.4d | 0d |  |  | 297h | 161h | 57,566.34 | 51,140 | 26,840 |  |
| 37 | 4.2.2.1 | **Content Development Planning** |  | 2.5d? | 2026-08-26 A | 2026-08-30 A |  | 100% |  | 2026-08-21 | 2026-08-26 | 3.5d? |  |  |  |  | 64h | 64h | 7,200 | 7,200 | 7,200 |  |
| 38 | 4.2.2.1.1 | Determine methods for delivering training |  | 2d? | 2026-08-26 A | 2026-08-27 A | 35 | 100% |  | 2026-08-21 | 2026-08-22 | 2d? |  |  |  | Content Developer [50%] | 8h | 8h | 800 | 800 | 800 | Path 02 |
| 39 | 4.2.2.1.2 | Determine form factor for training content |  | 1d? | 2026-08-27 A | 2026-08-27 A | 38 | 100% |  | 2026-08-22 | 2026-08-22 | 1d? |  |  |  | Content Developer | 8h | 8h | 800 | 800 | 800 | Path 02 |
| 40 | 4.2.2.1.3 | Identify internal resources that can review training materials |  | 1d? | 2026-08-27 A | 2026-08-28 A | 39 | 100% |  | 2026-08-24 | 2026-08-24 | 1d? |  |  |  | Customer Service Lead | 8h | 8h | 1,600 | 1,600 | 1,600 | Path 02 |
| 41 | 4.2.2.1.4 | Determine training course topics |  | 1d? | 2026-08-28 A | 2026-08-28 A | 40 | 100% |  | 2026-08-24 | 2026-08-25 | 1d? |  |  |  | Content Developer | 8h | 8h | 800 | 800 | 800 | Path 02 |
| 42 | 4.2.2.1.5 | Determine number of training courses |  | 1d? | 2026-08-28 A | 2026-08-29 A | 41 | 100% |  | 2026-08-25 | 2026-08-25 | 1d? |  |  |  | Content Developer | 8h | 8h | 800 | 800 | 800 | Path 02 |
| 43 | 4.2.2.1.6 | Design student materials |  | 1d? | 2026-08-29 A | 2026-08-29 A | 42 | 100% |  | 2026-08-25 | 2026-08-25 | 1d? |  |  |  | Content Developer | 8h | 8h | 800 | 800 | 800 | Path 02 |
| 44 | 4.2.2.1.7 | Draft description of training program/courses |  | 1d? | 2026-08-29 A | 2026-08-29 A | 43 | 100% |  | 2026-08-26 | 2026-08-26 | 1d? |  |  |  | Content Developer | 8h | 8h | 800 | 800 | 800 | Path 02 |
| 45 | 4.2.2.1.8 | Draft content development budget |  | 1d? | 2026-08-29 A | 2026-08-30 A | 44 | 100% |  | 2026-08-26 | 2026-08-26 | 1d? |  |  |  | Content Developer | 8h | 8h | 800 | 800 | 800 | Path 02 |
| 46 | 4.2.2.1.9 | Content Development Planning COMPLETE | milestone | 0d | 2026-08-30 A | 2026-08-30 A | 45 | 100% |  | 2026-08-26 | 2026-08-26 | 0d |  |  |  |  |  |  |  |  |  | Path 02 |
| 47 | 4.2.2.2 | **Training Delivery Planning** |  | 45.4d? | 2026-09-02 A | 2026-11-04 |  | 48% | 23.41d? | 2026-08-27 | 2026-09-24 | 20.75d? | -16.4d | 0d |  |  | 193h | 97h | 42,366.34 | 39,140 | 19,640 |  |
| 48 | 4.2.2.2.1 | **Assess Trainer Needs & Options** |  | 9d? | 2026-09-02 A | 2026-09-14 A |  | 100% |  | 2026-08-27 | 2026-09-11 | 12d? |  |  |  |  | 89h | 89h | 18,040 | 23,740 | 18,040 |  |
| 49 | 4.2.2.2.1.1 | Identify internal resources that can serve as potential trainers |  | 1d? | 2026-09-02 A | 2026-09-02 A | 46 | 100% |  | 2026-08-27 | 2026-08-27 | 1d? |  |  | start no earlier than 2026-09-02 | Customer Service Lead | 8h | 8h | 1,600 | 1,600 | 1,600 | Path 02 |
| 50 | 4.2.2.2.1.2 | Determine whether additional trainers will be needed |  | 1d? | 2026-09-03 A | 2026-09-03 A | 49 | 100% |  | 2026-08-28 | 2026-08-28 | 1d? |  |  |  | Customer Service Lead | 8h | 8h | 1,600 | 1,600 | 1,600 | Path 02 |
| 51 | 4.2.2.2.1.3 | **Review Outsourcing Options - Training Delivery** |  | 7d? | 2026-09-04 A | 2026-09-14 A |  | 100% |  | 2026-08-31 | 2026-09-11 | 10d? |  |  |  |  | 73h | 73h | 14,840 | 20,540 | 14,840 |  |
| 52 | 4.2.2.2.1.3.1 | Review expertise of potential vendors |  | 0.4w | 2026-09-04 A | 2026-09-07 A | 50 | 100% |  | 2026-08-31 | 2026-09-07 | 1w |  |  |  | Customer Service Lead | 31h | 31h | 6,800 | 12,500 | 6,800 | Path 02 |
| 53 | 4.2.2.2.1.3.2 | Review cost |  | 1d? | 2026-09-08 A | 2026-09-08 A | 52, 19 | 100% |  | 2026-09-07 | 2026-09-08 | 1d? |  |  |  | Customer Service Lead | 8h | 8h | 1,600 | 1,600 | 1,600 | Path 02 |
| 54 | 4.2.2.2.1.3.3 | Review service levels |  | 1d? | 2026-09-09 A | 2026-09-09 A | 53 | 100% |  | 2026-09-08 | 2026-09-08 | 1d? |  |  |  | Customer Service Lead | 8h | 8h | 1,600 | 1,600 | 1,600 | Path 02 |
| 55 | 4.2.2.2.1.3.4 | Review customer references |  | 1d? | 2026-09-10 A | 2026-09-10 A | 54 | 100% |  | 2026-09-09 | 2026-09-09 | 1d? |  |  |  | Customer Service Lead | 8h | 8h | 1,600 | 1,600 | 1,600 | Path 02 |
| 56 | 4.2.2.2.1.3.5 | Determine time required to ready external trainers |  | 1d? | 2026-09-11 A | 2026-09-11 A | 55 | 100% |  | 2026-09-10 | 2026-09-10 | 1d? |  |  |  | Customer Service Lead; Trainer [25%] | 10h | 10h | 1,640 | 1,640 | 1,640 | Path 02 |
| 57 | 4.2.2.2.1.3.6 | Make outsourcing decision |  | 1d? | 2026-09-14 A | 2026-09-14 A | 56 | 100% |  | 2026-09-11 | 2026-09-11 | 1d? |  |  |  | Customer Service Lead | 8h | 8h | 1,600 | 1,600 | 1,600 | Path 02 |
| 58 | 4.2.2.2.1.3.7 | Outsourcing Review COMPLETE | milestone | 0d | 2026-09-14 A | 2026-09-14 A | 57 | 100% |  | 2026-09-11 | 2026-09-11 | 0d |  |  |  |  |  |  |  |  |  | Path 02 |
| 59 | 4.2.2.2.1.4 | Trainer Needs Assessment COMPLETE | milestone | 0d | 2026-09-14 A | 2026-09-14 A | 58 | 100% |  | 2026-09-11 | 2026-09-11 | 0d |  |  |  |  |  |  |  |  |  | Path 02 |

| ID | WBS | Task | Type | Duration | Start | Finish | Predecessors | Complete | Remaining | Baseline start | Baseline finish | Baseline duration | Total slack | Free slack | Constraint | Resources | Work | Actual work | Cost | Baseline cost | Actual cost | Trace Log Field |
| --- | --- | --- | --- | --- | --- | --- | --- | --- | --- | --- | --- | --- | --- | --- | --- | --- | --- | --- | --- | --- | --- | --- |
| 60 | 4.2.2.2.2 | **Training Delivery Logistics** |  | 28.4d? | 2026-09-25 A | 2026-11-04 |  | 17% | 23.59d? | 2026-09-14 | 2026-09-23 | 7.75d? | -16.4d | 0d |  |  | 44h | 8h | 10,326.34 | 13,800 | 1,600 |  |
| 61 | 4.2.2.2.2.1 | Create training delivery schedule |  | 1d? | 2026-09-25 A | 2026-09-25 A | 59 | 100% |  | 2026-09-14 | 2026-09-14 | 1d? |  |  | start no earlier than 2026-09-23 | Customer Service Lead | 8h | 8h | 1,600 | 1,600 | 1,600 | Path 02 |
| 62 | 4.2.2.2.2.2 | Determine training delivery locations |  | 1d? | 2026-10-13 | 2026-10-13 | 61 |  |  | 2026-09-15 | 2026-09-15 | 1d? | -18d | 0d | start no earlier than 2026-10-12 | Customer Service Lead | 8h |  | 1,600 | 1,600 |  | Path 02 |
| 63 | 4.2.2.2.2.3 | Review outsourcing options - event logistics |  | 1d? | 2026-10-14 | 2026-10-14 | 62 |  |  | 2026-09-16 | 2026-09-16 | 1d? | -18d | 0d | start no earlier than 2026-10-12 | Customer Service Lead | 8h |  | 1,600 | 1,600 |  | Path 02 |
| 64 | 4.2.2.2.2.4 | Develop training delivery budget |  | 0.38w | 2026-11-02 | 2026-11-04 | 63 |  |  | 2026-09-17 | 2026-09-22 | 0.75w | -16.4d | 0d | start no earlier than 2026-10-12 | Customer Service Lead; Cleaning [0.2%]; Trainer Apprentice; Logistics Apprentice | 20h |  | 5,526.34 | 9,000 |  | Path 02 |
| 65 | 4.2.2.2.2.5 | Training Delivery Logistics COMPLETE |  | 1d? | 2026-10-13 | 2026-10-13 | 59 |  |  | 2026-09-22 | 2026-09-23 | 1d? | -17.62d | 0d | start no earlier than 2026-10-12 |  |  |  |  |  |  | Path 02 |
| 66 | 4.2.2.2.3 | Create training plan with outputs of Content Development & Training Delivery Phases |  | 5.75d? | 2026-10-13 | 2026-10-21 | 65 |  |  | 2026-09-23 | 2026-09-24 | 1d? | -17.62d | 0d | start no earlier than 2026-10-12 | Customer Service Lead; AI Token Time [1 Bucket]; Cleaning [0.1%]; Customer Service Team | 60h |  | 14,000 | 1,600 |  | Path 02 |
| 67 | 4.2.2.2.4 | Training Delivery Planning Complete | milestone | 0d | 2026-10-21 | 2026-10-21 | 66 |  |  | 2026-09-24 | 2026-09-24 | 0d | -17.62d | 0d | start no earlier than 2026-10-12 |  |  |  |  |  |  | Path 02 |
| 68 | 4.2.2.3 | **Finalize Training Planning** |  | 5d? | 2026-10-21 | 2026-10-28 |  |  |  | 2026-09-24 | 2026-09-29 | 3d? | -17.62d | 0d |  |  | 40h |  | 8,000 | 4,800 |  |  |
| 69 | 4.2.2.3.1 | Draft Overall Budget |  | 1d? | 2026-10-21 | 2026-10-22 | 67 |  |  | 2026-09-24 | 2026-09-25 | 1d? | -17.62d | 0d | start no earlier than 2026-10-12 | Customer Service Lead | 8h |  | 1,600 | 1,600 |  | Path 02 |
| 70 | 4.2.2.3.2 | Acquire executive sign-off on budget |  | 3d | 2026-10-22 | 2026-10-27 | 69 |  |  | 2026-09-25 | 2026-09-28 | 1d | -17.62d | 0d | start no earlier than 2026-10-12 | Customer Service Lead | 24h |  | 4,800 | 1,600 |  | Path 02 |
| 71 | 4.2.2.3.3 | Acquire executive sign-off on training plans |  | 1d | 2026-10-27 | 2026-10-28 | 70 |  |  | 2026-09-28 | 2026-09-29 | 1d | -17.62d | 0d | start no earlier than 2026-10-12 | Customer Service Lead | 8h |  | 1,600 | 1,600 |  | Path 02 |
| 72 | 4.2.2.4 | Training Planning COMPLETE | milestone | 0d | 2026-10-28 | 2026-10-28 | 71 |  |  | 2026-09-29 | 2026-09-29 | 0d | -17.62d | 0d | start no earlier than 2026-10-12 |  |  |  |  |  |  | Path 02 |
| 73 | 4.3 | **Technology Infrastructure** |  | 2d? | 2026-10-13 | 2026-10-14 |  |  |  | 2026-08-18 | 2026-08-21 | 3d? | 5d |  |  |  | 16h |  | 840 | 840 |  |  |
| 74 | 4.3.1 | Build technology infrastructure plan (separate project plan required) |  | 1d? | 2026-10-13 | 2026-10-13 | 23 |  |  | 2026-08-18 | 2026-08-19 | 1d? | 5d | 0d | start no earlier than 2026-10-12 | Technology Lead | 8h |  | 420 | 420 |  |  |
| 75 | 4.3.2 | Determine technology budget |  | 1d? | 2026-10-14 | 2026-10-14 | 74 |  |  | 2026-08-19 | 2026-08-21 | 1d? | 5d | 0d | start no earlier than 2026-10-12 | Technology Lead | 8h |  | 420 | 420 |  |  |
| 76 | 4.3.3 | Technology infrastructure planning COMPLETE | milestone | 0d | 2026-10-14 | 2026-10-14 | 75 |  |  | 2026-08-21 | 2026-08-21 | 0d | 5d | 0d | start no earlier than 2026-10-12 |  |  |  |  |  |  |  |
| 77 | 4.4 | Service Delivery Planning COMPLETE | milestone | 0d | 2026-10-14 | 2026-10-14 | 76 |  |  | 2026-08-21 | 2026-08-21 | 0d | 42d |  | start no earlier than 2026-10-12 |  |  |  |  |  |  |  |
| 78 | 5 | **Business Performance Planning** |  | 19d? | 2026-10-13 | 2026-11-06 |  |  |  | 2026-08-17 | 2026-08-18 | 2d? | -25.68d | 0d |  |  | 136h |  | 37,648 | 2,400 |  |  |
| 79 | 5.1 | Determine business objectives of support services |  | 1d? | 2026-10-13 | 2026-10-13 | 22 |  |  | 2026-08-17 | 2026-08-17 | 1d? | -25.68d | 0d | start no earlier than 2026-10-12 | Customer Service Lead | 8h |  | 1,600 | 1,600 |  |  |
| 80 | 5.2 | Determine success metrics |  | 11.8d? | 2026-10-13 | 2026-11-04 | 79 |  |  | 2026-08-17 | 2026-08-18 | 1d? | -25.68d | 0d | start no earlier than 2026-10-12 | Customer Service Team; AI Token Time [1 Bucket]; Cleaning [0.1%]; Logistics [25%] | 88h |  | 34,048 | 400 |  |  |
| 81 | 5.3 | Determine cost efficiency standards |  | 5d? | 2026-11-04 | 2026-11-06 | 80 |  |  | 2026-08-18 | 2026-08-18 | 1d? | -25.68d | 0d | start no earlier than 2026-10-12 | Customer Service Team | 40h |  | 2,000 | 400 |  |  |
| 82 | 5.4 | Business Performance Planning COMPLETE | milestone | 0d | 2026-11-06 | 2026-11-06 | 81 |  |  | 2026-08-18 | 2026-08-18 | 0d | -25.12d | 0d | start no earlier than 2026-10-12 |  |  |  |  |  |  |  |
| 83 | 6 | **Build Customer Service Program** |  | 86d? | 2026-07-28 A | 2026-11-25 |  | 32% | 58.16d? | 2026-08-18 | 2026-10-15 | 42d? | 12d |  |  |  | 352h | 112h | 37,240 | 36,040 | 5,600 |  |
| 84 | 6.1 | **Training/Readiness Development** |  | 13d? | 2026-11-09 | 2026-11-25 |  |  |  | 2026-09-29 | 2026-10-15 | 12.25d? | -25.12d | 0d |  |  | 168h |  | 22,800 | 22,800 |  |  |
| 85 | 6.1.1 | **Training Content Development** |  | 5.12d? | 2026-11-09 | 2026-11-16 |  |  |  | 2026-09-29 | 2026-10-05 | 4.25d? | -25.12d | 0d |  |  | 72h |  | 10,400 | 10,400 |  |  |
| 86 | 6.1.1.1 | Assemble content development team |  | 1d? | 2026-11-09 | 2026-11-09 | 72, 82 |  |  | 2026-09-29 | 2026-09-30 | 1d? | -25.12d | 0d | start no earlier than 2026-10-12 | Customer Service Lead | 8h |  | 1,600 | 1,600 |  | Path 02 |
| 87 | 6.1.1.2 | Define roles and responsibilities |  | 1d? | 2026-11-10 | 2026-11-10 | 86 |  |  | 2026-09-30 | 2026-10-01 | 1d? | -25.12d | 0d | start no earlier than 2026-10-12 | Customer Service Lead | 8h |  | 1,600 | 1,600 |  | Path 02 |
| 88 | 6.1.1.3 | Create content development schedule |  | 1d? | 2026-11-11 | 2026-11-11 | 87 |  |  | 2026-10-01 | 2026-10-02 | 1d? | -25.12d | 0d | start no earlier than 2026-10-12 | Customer Service Lead | 8h |  | 1,600 | 1,600 |  | Path 02 |

| ID | WBS | Task | Type | Duration | Start | Finish | Predecessors | Complete | Remaining | Baseline start | Baseline finish | Baseline duration | Total slack | Free slack | Constraint | Resources | Work | Actual work | Cost | Baseline cost | Actual cost | Trace Log Field |
| --- | --- | --- | --- | --- | --- | --- | --- | --- | --- | --- | --- | --- | --- | --- | --- | --- | --- | --- | --- | --- | --- | --- |
| 89 | 6.1.1.4 | **Build Training Content** |  | 2.12d? | 2026-11-11 | 2026-11-16 |  |  |  | 2026-10-02 | 2026-10-05 | 1.25d? | -25.12d | 0d |  |  | 48h |  | 5,600 | 5,600 |  |  |
| 90 | 6.1.1.4.1 | Review existing intellectual property |  | 1d? | 2026-11-11 | 2026-11-12 | 88 |  |  | 2026-10-02 | 2026-10-02 | 1d? | -25.12d | 0d | start no earlier than 2026-10-12 | Content Developer | 8h |  | 800 | 800 |  | Path 02 |
| 91 | 6.1.1.4.2 | Develop beta content |  | 1d? | 2026-11-12 | 2026-11-12 | 90 |  |  | 2026-10-02 | 2026-10-03 | 1d? | -25.12d | 0d | start no earlier than 2026-10-12 | Content Developer | 8h |  | 800 | 800 |  | Path 02 |
| 92 | 6.1.1.4.3 | Perform SME review of training content |  | 1d? | 2026-11-12 | 2026-11-12 | 91 |  |  | 2026-10-03 | 2026-10-03 | 1d? | -25.12d | 0d | start no earlier than 2026-10-12 | Content Developer | 8h |  | 800 | 800 |  | Path 02 |
| 93 | 6.1.1.4.4 | Revise and update content |  | 1d? | 2026-11-12 | 2026-11-13 | 92 |  |  | 2026-10-03 | 2026-10-03 | 1d? | -25.12d | 0d | start no earlier than 2026-10-12 | Content Developer | 8h |  | 800 | 800 |  | Path 02 |
| 94 | 6.1.1.4.5 | Create "cheat sheets" and additional learning resources for customer support |  | 1d? | 2026-11-13 | 2026-11-13 | 93 |  |  | 2026-10-03 | 2026-10-04 | 1d? | -25.12d | 0d | start no earlier than 2026-10-12 | Content Developer | 8h |  | 800 | 800 |  | Path 02 |
| 95 | 6.1.1.4.6 | Acquire final content approval |  | 1d? | 2026-11-13 | 2026-11-16 | 94 |  |  | 2026-10-05 | 2026-10-05 | 1d? | -25.12d | 0d | start no earlier than 2026-10-12 | Customer Service Lead | 8h |  | 1,600 | 1,600 |  | Path 02 |
| 96 | 6.1.1.5 | Content Development COMPLETE | milestone | 0d | 2026-11-16 | 2026-11-16 | 95 |  |  | 2026-10-05 | 2026-10-05 | 0d | -25.12d | 0d | start no earlier than 2026-10-12 |  |  |  |  |  |  | Path 02 |
| 97 | 6.1.2 | **Develop Training Delivery Engine** |  | 7.88d? | 2026-11-16 | 2026-11-25 |  |  |  | 2026-10-05 | 2026-10-15 | 8d? | -27d | 0d |  |  | 96h |  | 12,400 | 12,400 |  |  |
| 98 | 6.1.2.1 | Create additional "train the trainer" learning materials |  | 1d? | 2026-11-16 | 2026-11-16 | 96 |  |  | 2026-10-05 | 2026-10-06 | 1d? | -26d | 0d | start no earlier than 2026-10-12 | Content Developer | 8h |  | 800 | 800 |  | Path 02 |
| 99 | 6.1.2.2 | Create proficiency exams |  | 4d | 2026-11-16 | 2026-11-18 | 98 |  |  | 2026-10-06 | 2026-10-07 | 4d | -27d | 0d | start no earlier than 2026-10-12 | Content Developer | 32h |  | 3,200 | 3,200 |  | Path 02 |
| 100 | 6.1.2.3 | Train additional trainers |  | 1d? | 2026-11-18 | 2026-11-18 | 99 |  |  | 2026-10-07 | 2026-10-08 | 1d? | -27d | 0d | start no earlier than 2026-10-12 | Trainer | 8h |  | 160 | 160 |  | Path 02 |
| 101 | 6.1.2.4 | Prepare training venues |  | 1d? | 2026-11-18 | 2026-11-19 | 100 |  |  | 2026-10-08 | 2026-10-09 | 1d? | -27d | 0d |  | Logistics | 8h |  | 240 | 240 |  | Path 02 |
| 102 | 6.1.2.5 | Create communications plan |  | 3d | 2026-11-19 | 2026-11-23 | 101, 64 |  |  | 2026-10-09 | 2026-10-13 | 3d | -27d | 0d |  | Customer Service Lead | 24h |  | 4,800 | 4,800 |  | Path 02 |
| 103 | 6.1.2.6 | Provide new hires with information on training program |  | 1d? | 2026-11-24 | 2026-11-24 | 102 |  |  | 2026-10-14 | 2026-10-14 | 1d? | -27d | 0d |  | Customer Service Lead | 8h |  | 1,600 | 1,600 |  | Path 02 |
| 104 | 6.1.2.7 | Send out communication to existing support resources regarding new training plan |  | 1d? | 2026-11-25 | 2026-11-25 | 103 |  |  | 2026-10-15 | 2026-10-15 | 1d? | -27d | 0d |  | Customer Service Lead | 8h |  | 1,600 | 1,600 |  | Path 02 |
| 105 | 6.1.2.8 | Training Delivery Engine Development COMPLETE | milestone | 0d | 2026-11-25 | 2026-11-25 | 104 |  |  | 2026-10-15 | 2026-10-15 | 0d | -27d | 0d |  |  |  |  |  |  |  | Path 02 |
| 106 | 6.1.3 | Training/Readiness Development COMPLETE | milestone | 0d | 2026-11-25 | 2026-11-25 | 105 |  |  | 2026-10-15 | 2026-10-15 | 0d | 12d |  |  |  |  |  |  |  |  |  |
| 107 | 6.2 | **Build Technology Infrastructure** |  | 2d? | 2026-10-15 | 2026-10-16 |  |  |  | 2026-08-24 | 2026-08-27 | 3d? | 5d |  |  |  | 32h |  | 2,040 | 2,040 |  |  |
| 108 | 6.2.1 | Design and develop technology solution (separate schedule required) |  | 1d? | 2026-10-15 | 2026-10-15 | 76 |  |  | 2026-08-24 | 2026-08-25 | 1d? | 5d | 0d | start no earlier than 2026-10-12 | Technology Lead | 8h |  | 420 | 420 |  |  |
| 109 | 6.2.2 | Test technology infrastructure |  | 2.25d? | 2026-10-15 | 2026-10-16 | 108 |  |  | 2026-08-25 | 2026-08-27 | 2.5d? | 5d | 0d | start no earlier than 2026-10-12 | Customer Service Team; Technology Lead; Content Developer | 24h |  | 1,620 | 1,620 |  |  |
| 110 | 6.2.3 | Technology Infrastructure Development COMPLETE | milestone | 0d | 2026-10-16 | 2026-10-16 | 109 |  |  | 2026-08-27 | 2026-08-27 | 0d | 40d |  | start no earlier than 2026-10-12 |  |  |  |  |  |  |  |
| 111 | 6.3 | **Customer Service Program Development** |  | 71.15d? | 2026-07-28 A | 2026-11-05 |  | 74% | 18.72d? | 2026-08-18 | 2026-10-08 | 36.75d? | 26.85d |  |  |  | 152h | 112h | 12,400 | 11,200 | 5,600 |  |
| 112 | 6.3.1 | Build customer service programs |  | 1d? | 2026-07-28 A | 2026-07-29 A |  | 100% |  | 2026-08-18 | 2026-08-19 | 1d? |  |  |  | Customer Service Team | 8h | 8h | 400 | 400 | 400 |  |
| 113 | 6.3.2 | Perform subject matter expert review |  | 5d | 2026-07-29 A | 2026-07-31 A | 112 | 100% |  | 2026-08-19 | 2026-08-21 | 5d |  |  |  | Customer Service Team | 40h | 40h | 2,000 | 2,000 | 2,000 |  |
| 114 | 6.3.3 | Perform user acceptance testing with customers |  | 8d | 2026-07-31 A | 2026-08-06 A | 113 | 100% |  | 2026-08-21 | 2026-08-27 | 5d |  |  |  | Customer Service Team | 64h | 64h | 3,200 | 2,000 | 3,200 |  |
| 115 | 6.3.4 | Revise programs and related processes |  | 1d? | 2026-10-12 | 2026-10-13 | 114 |  |  | 2026-08-27 | 2026-08-27 | 1d? | 26.85d | 0d | start no earlier than 2026-10-12 | Customer Service Team | 8h |  | 400 | 400 |  |  |
| 116 | 6.3.5 | Acquire executive sign-off |  | 4d | 2026-10-19 | 2026-11-05 | 115 |  |  | 2026-09-22 | 2026-10-08 | 4d | 26.85d | 0d | start no earlier than 2026-10-12 | Customer Service Lead | 32h |  | 6,400 | 6,400 |  |  |
| 117 | 6.3.6 | Customer Service Program Development COMPLETE | milestone | 0d | 2026-11-05 | 2026-11-05 | 116 |  |  | 2026-10-08 | 2026-10-08 | 0d | 26.85d |  | start no earlier than 2026-10-12 |  |  |  |  |  |  |  |

| ID | WBS | Task | Type | Duration | Start | Finish | Predecessors | Baseline start | Baseline finish | Baseline duration | Total slack | Free slack | Constraint | Deadline | Calendar | Resources | Work | Cost | Baseline cost | Trace Log Field |
| --- | --- | --- | --- | --- | --- | --- | --- | --- | --- | --- | --- | --- | --- | --- | --- | --- | --- | --- | --- | --- |
| 118 | 7 | **Program Deployment** |  | 34d? | 2026-10-19 | 2026-12-03 |  | 2026-08-28 | 2026-10-23 | 40.5d? | 1d |  |  |  |  |  | 56h | 8,580 | 8,580 |  |
| 119 | 7.1 | **Resource Readiness** |  | 5d? | 2026-11-26 | 2026-12-02 |  | 2026-10-16 | 2026-10-22 | 5d? | -27d | 0d |  |  |  |  | 40h | 6,560 | 6,560 |  |
| 120 | 7.1.1 | Hire new resources |  | 1d? | 2026-11-26 | 2026-11-26 | 95, 105 | 2026-10-16 | 2026-10-16 | 1d? | -27d | 0d |  |  |  | Customer Service Lead | 8h | 1,600 | 1,600 | Path 02 |
| 121 | 7.1.2 | Train new resources |  | 1d? | 2026-11-27 | 2026-11-27 | 120 | 2026-10-19 | 2026-10-19 | 1d? | -27d | 0d |  |  |  | Trainer | 8h | 160 | 160 | Path 02 |
| 122 | 7.1.3 | Certify new resources |  | 3d | 2026-11-30 | 2026-12-02 | 121 | 2026-10-20 | 2026-10-22 | 3d | -27d | 0d |  |  |  | Customer Service Lead | 24h | 4,800 | 4,800 | Path 02 |
| 123 | 7.1.4 | Resource Readiness Training COMPLETE | milestone | 0d | 2026-12-02 | 2026-12-02 | 122 | 2026-10-22 | 2026-10-22 | 0d | 7d |  |  |  |  |  |  |  |  |  |
| 124 | 7.2 | Deploy technology infrastructure |  | 1d? | 2026-10-19 | 2026-10-19 | 109 | 2026-08-28 | 2026-08-31 | 1d? | 5d |  | start no earlier than 2026-10-12 |  |  | Technology Lead | 8h | 420 | 420 |  |
| 125 | 7.3 | Deploy new customer service programs |  | 1d? | 2026-12-03 | 2026-12-03 | 124, 122 | 2026-10-23 | 2026-10-23 | 1d? | -27d | 0d |  |  |  | Customer Service Lead | 8h | 1,600 | 1,600 | Path 02 |
| 126 | 7.4 | Program Deployment COMPLETE | milestone | 0d | 2026-12-03 | 2026-12-03 | 125 | 2026-10-23 | 2026-10-23 | 0d | -27d | 0d |  |  |  |  |  |  |  | Path 02 |
| 127 | 8 | **Post Launch** |  | 6d? | 2026-12-03 | 2026-12-12 |  | 2026-10-23 | 2026-11-05 | 8.5d? | -27d | 0d |  |  |  |  | 152h | 10,000 | 10,000 |  |
| 128 | 8.1 | **Engage in Post Launch Preparation Activities** |  | 3d? | 2026-12-03 | 2026-12-08 |  | 2026-10-23 | 2026-10-30 | 4.5d? | -27d | 0d |  |  |  |  | 72h | 3,600 | 3,600 |  |
| 129 | 8.1.1 | Determine success metrics |  | 8h | 2026-12-03 | 2026-12-04 | 126 | 2026-10-23 | 2026-10-26 | 8h | -27d | 0d |  |  |  | Customer Service Team | 8h | 400 | 400 | Path 02 |
| 130 | 8.1.2 | Create method for tracking common problems and solutions |  | 1d? | 2026-12-04 | 2026-12-04 | 129 | 2026-10-26 | 2026-10-26 | 1d? | -27d | 0d |  |  |  | Customer Service Team | 8h | 400 | 400 | Path 02 |
| 131 | 8.1.3 | Create method to track support issues vs. product aspects |  | 3d | 2026-12-04 | 2026-12-08 | 130 | 2026-10-26 | 2026-10-29 | 3d | -117d | 0d |  |  | 24 Hours | Customer Service Team [200%] | 48h | 2,400 | 2,400 | Path 02 |
| 132 | 8.1.4 | Create method for distributing common solutions to all support resources |  | 1d? | 2026-12-08 | 2026-12-08 | 131 | 2026-10-29 | 2026-10-30 | 1d? | -27d | 0d |  |  |  | Customer Service Team | 8h | 400 | 400 | Path 01 |
| 133 | 8.1.5 | Post Launch Preparation COMPLETE | milestone | 0d | 2026-12-08 | 2026-12-08 | 132 | 2026-10-30 | 2026-10-30 | 0d | -27d | 0d |  |  |  |  |  |  |  | Path 01 |
| 134 | 8.2 | **Monitoring** |  | 3d? | 2026-12-08 | 2026-12-12 |  | 2026-10-30 | 2026-11-05 | 4d? | -27d | 0d |  |  |  |  | 80h | 6,400 | 6,400 |  |
| 135 | 8.2.1 | Monitor customer support issues - look for common problems |  | 1d? | 2026-12-08 | 2026-12-09 | 133 | 2026-10-30 | 2026-10-30 | 1d? | -27d | 0d |  |  |  | Customer Service Team | 8h | 400 | 400 | Path 01 |
| 136 | 8.2.2 | Aggregate best practices (solutions) - distribute to support services |  | 1d? | 2026-12-09 | 2026-12-09 | 135 | 2026-10-30 | 2026-11-02 | 1d? | -27d | 0d |  |  |  | Customer Service Team | 8h | 400 | 400 | Path 01 |
| 137 | 8.2.3 | Review support data, determine which product aspects cause the most support incidents |  | 1d? | 2026-12-09 | 2026-12-10 | 136 | 2026-11-02 | 2026-11-02 | 1d? | -27d | 0d |  |  |  | Customer Service Team | 8h | 400 | 400 | Path 01 |
| 138 | 8.2.4 | Review resource performance, determine which ones are the most effective |  | 1d? | 2026-12-10 | 2026-12-10 | 137 | 2026-11-02 | 2026-11-03 | 1d? | -27d | 0d |  |  |  | Customer Service Team | 8h | 400 | 400 | Path 01 |
| 139 | 8.2.5 | Revise training materials based on data collected from customer service program |  | 2ed | 2026-12-10 | 2026-12-12 | 138 | 2026-11-03 | 2026-11-05 | 2ed | -111d | 0d |  |  |  | Content Developer | 48h | 4,800 | 4,800 | Path 01 |
| 140 | 8.3 | Post Launch Activities COMPLETE | milestone | 0d | 2026-12-12 | 2026-12-12 | 139 | 2026-11-05 | 2026-11-05 | 0d | -26d | 0d |  |  |  |  |  |  |  | Path 01 |
| 141 | 9 | Customer Service Program Development COMPLETE | milestone | 0d | 2026-12-12 | 2026-12-12 | 140 | 2026-11-05 | 2026-11-05 | 0d | -26d | 0d |  | 2026-11-05 |  |  |  |  |  | Path 01 |
