# TP4 - Data Center Fit-Out

Schedule from MS Project XML, 2026-01-05 to 2026-06-05, status date 2026-03-31, A marks actual dates.

## Calendars

- Standard: Mon-Fri 08:00-12:00, 13:00-17:00; Sat-Sun off.

## Schedule

| ID | Task | Type | Duration | Start | Finish | Predecessors | Complete | Remaining | Baseline start | Baseline finish | Baseline duration |
| --- | --- | --- | --- | --- | --- | --- | --- | --- | --- | --- | --- |
| 1 | Notice to proceed | milestone | 0d | 2026-01-05 A | 2026-01-05 A |  | 100% |  | 2026-01-05 | 2026-01-05 | 0d |
| 2 | Design & permits |  | 15d | 2026-01-05 A | 2026-01-23 A | 1 | 100% |  | 2026-01-05 | 2026-01-23 | 15d |
| 3 | Demolition & shell prep |  | 10d | 2026-01-26 A | 2026-02-06 A | 2 | 100% |  | 2026-01-26 | 2026-02-06 | 10d |
| 4 | Electrical rough-in |  | 22d | 2026-02-09 A | 2026-03-10 A | 3 | 100% |  | 2026-02-09 | 2026-03-06 | 20d |
| 5 | Mechanical / HVAC rough-in |  | 25d | 2026-02-09 A | 2026-03-13 | 3 | 50% | 12.5d | 2026-02-09 | 2026-03-13 | 25d |
| 6 | Fire suppression |  | 15d | 2026-02-09 A | 2026-02-27 A | 3 | 100% |  | 2026-02-09 | 2026-02-27 | 15d |
| 7 | Generator & switchgear procurement |  | 20d | 2026-02-02 A | 2026-02-27 | 2 | 25% | 15d | 2026-01-26 | 2026-02-20 | 20d |
| 8 | Raised floor & containment |  | 15d | 2026-03-16 | 2026-04-03 | 4, 5 |  |  | 2026-03-16 | 2026-04-03 | 15d |
| 9 | Power distribution units |  | 10d | 2026-03-11 A | 2026-03-24 A | 4 | 100% |  | 2026-03-09 | 2026-03-20 | 10d |
| 10 | UPS & battery installation |  | 15d | 2026-03-25 | 2026-04-14 | 9, 7 |  |  | 2026-03-23 | 2026-04-10 | 15d |
| 11 | Network cabling |  | 20d | 2026-04-06 | 2026-05-01 | 8 |  |  | 2026-04-06 | 2026-05-01 | 20d |
| 12 | CRAC units set & pipe |  | 20d | 2026-04-06 | 2026-05-01 | 5, 8 |  |  | 2026-04-06 | 2026-05-01 | 20d |
| 13 | Commissioning L1-L3 |  | 15d | 2026-05-04 | 2026-05-22 | 6, 10, 11, 12 |  |  | 2026-05-04 | 2026-05-22 | 15d |
| 14 | Integrated systems test |  | 10d | 2026-05-25 | 2026-06-05 | 13 |  |  | 2026-05-25 | 2026-06-05 | 10d |
| 15 | Substantial completion | milestone | 0d | 2026-06-05 | 2026-06-05 | 14 |  |  | 2026-06-05 | 2026-06-05 | 0d |
